# ▼硅酸铝钠性能优化与工艺稳定

Schedule from a web Gantt chart, 2024-07-03 to 2024-07-03.
Every day is a working day

## Schedule

| ID | WBS | Task | Duration | Start | Finish |
| --- | --- | --- | --- | --- | --- |
| 2 | 1 | **▶硅酸铝钠&长石1:1工艺稳定性提升** | 1d | 2024-07-03 | 2024-07-03 |
| 3 | 1.1 | **硅酸铝钠&长石1:1样块烧结** | 1d | 2024-07-03 | 2024-07-03 |
| 4 | 1.1.1 | 硅酸铝钠&长石1:1样块920℃烧结 | 1d | 2024-07-03 | 2024-07-03 |
| 5 | 1.1.2 | 硅酸铝钠&长石1:1样块930℃烧结 | 1d | 2024-07-03 | 2024-07-03 |
| 6 | 1.2 | 硅酸铝钠&长石1:1样块改性 | 1d | 2024-07-03 | 2024-07-03 |
| 7 | 1.3 | **硅酸铝钠&长石1:1树脂渗透** | 1d | 2024-07-03 | 2024-07-03 |
| 8 | 1.3.1 | 硅酸铝钠&长石1:1样块3:4:3树脂渗透 | 1d | 2024-07-03 | 2024-07-03 |
| 9 | 1.3.2 | 硅酸铝钠&长石1:1样块6:4树脂渗透 | 1d | 2024-07-03 | 2024-07-03 |
| 10 | 1.4 | 硅酸铝钠&长石1:1样块固化 | 1d | 2024-07-03 | 2024-07-03 |
| 11 | 2 | **▶硅酸铝钠&长石1:1硬度提升** | 1d | 2024-07-03 | 2024-07-03 |
| 12 | 2.1 | **硅:长1:1+增强剂的样块900℃烧结** | 1d | 2024-07-03 | 2024-07-03 |
| 13 | 2.1.1 | 硅:长1:1+5%CaCO3晶须900℃烧结 | 1d | 2024-07-03 | 2024-07-03 |
| 14 | 2.1.2 | 硅:长1:1+5%CaCO3长须900℃烧结 | 1d | 2024-07-03 | 2024-07-03 |
| 15 | 2.1.3 | 硅:长1:1+5%CaSO4晶须900℃烧结 | 1d | 2024-07-03 | 2024-07-03 |
| 16 | 2.1.4 | 硅:长1:1+5%Ca3(PO4)2粉体900℃烧结 | 1d | 2024-07-03 | 2024-07-03 |
| 17 | 2.1.5 | 硅:长1:1+5%MgO粉体900℃烧结 | 1d | 2024-07-03 | 2024-07-03 |
| 18 | 2.1.6 | 硅:长1:1+5%HAP粉体900℃烧结 | 1d | 2024-07-03 | 2024-07-03 |
| 19 | 2.2 | **硅:长1:1+增强剂的样块920℃烧结** | 1d | 2024-07-03 | 2024-07-03 |
| 20 | 2.2.1 | 硅:长1:1+5%CaCO3晶须920℃烧结 | 1d | 2024-07-03 | 2024-07-03 |
| 21 | 2.2.2 | 硅:长1:1+5%CaCO3长须920℃烧结 | 1d | 2024-07-03 | 2024-07-03 |
| 22 | 2.2.3 | 硅:长1:1+5%CaSO4晶须920℃烧结 | 1d | 2024-07-03 | 2024-07-03 |
| 23 | 2.2.4 | 硅:长1:1+5%Ca3(PO4)2粉体920℃烧结 | 1d | 2024-07-03 | 2024-07-03 |
| 24 | 2.2.5 | 硅:长1:1+5%MgO粉体920℃烧结 | 1d | 2024-07-03 | 2024-07-03 |
| 25 | 2.2.6 | 硅:长1:1+5%HAP粉体920℃烧结 | 1d | 2024-07-03 | 2024-07-03 |
| 26 | 2.3 | 硅酸铝钠&长石1:1+增强剂样块改性 | 1d | 2024-07-03 | 2024-07-03 |
| 27 | 2.4 | 硅酸铝钠&长石1:1+增强剂样块渗透 | 1d | 2024-07-03 | 2024-07-03 |
| 28 | 2.5 | 硅酸铝钠&长石1:1+增强剂样块固化 | 1d | 2024-07-03 | 2024-07-03 |
